Schedule from GanttProject, 2018-12-04 to 2019-05-10.

## Calendars

- Project calendar: Mon-Fri working; Sat-Sun off.

## Schedule

| ID | WBS | Task | Type | Duration | Start | Finish | Predecessors | Complete |
| --- | --- | --- | --- | --- | --- | --- | --- | --- |
| 1 | 1 | **프로젝트 관리** |  | 11d | 2018-12-04 | 2018-12-18 |  | 100% |
| 2 | 1.1 | 스케쥴 수립 |  | 2d | 2018-12-04 | 2018-12-05 |  | 100% |
| 3 | 1.2 | (산출물) 개발계획서 | milestone | 0d | 2018-12-06 | 2018-12-06 | 2 | 100% |
| 4 | 1.3 | 사양 설정 |  | 9d | 2018-12-06 | 2018-12-18 | 2 | 100% |
| 5 | 1.4 | (산출물) 사양서 | milestone | 0d | 2018-12-19 | 2018-12-19 | 4 | 100% |
| 6 | 2 | **제품디자인** |  | 10d | 2018-12-06 | 2018-12-19 |  | 100% |
| 7 | 2.1 | 1차 디자인 시안 |  | 3d | 2018-12-06 | 2018-12-10 | 2 | 100% |
| 8 | 2.2 | 2차 디자인 시안 |  | 7d | 2018-12-11 | 2018-12-19 | 7 | 100% |
| 9 | 2.3 | (산출물) 디자인 확정안 | milestone | 0d | 2018-12-20 | 2018-12-20 | 8 | 100% |
| 10 | 3 | **회로개발** |  | 34d | 2018-12-19 | 2019-02-04 |  | 50% |
| 11 | 3.1 | 아키텍쳐 설계 |  | 5d | 2018-12-19 | 2018-12-25 | 5 | 100% |
| 12 | 3.2 | 상세설계 |  | 15d | 2018-12-26 | 2019-01-15 | 11 | 50% |
| 13 | 3.3 | (산출물) 회로도면 | milestone | 0d | 2019-01-16 | 2019-01-16 | 12 |  |
| 14 | 3.4 | 부품조달 |  | 14d | 2019-01-16 | 2019-02-04 | 13 |  |
| 15 | 4 | **기구개발** |  | 33d | 2018-12-19 | 2019-02-01 |  | 50% |
| 16 | 4.1 | 대략설계 |  | 4d | 2018-12-19 | 2018-12-24 | 5 | 100% |
| 17 | 4.2 | 상세설계 |  | 15d | 2018-12-25 | 2019-01-14 | 16 | 50% |
| 18 | 4.3 | (산출물) 기구도면 | milestone | 0d | 2019-01-15 | 2019-01-15 | 17 |  |
| 19 | 4.4 | 부품조달 |  | 14d | 2019-01-15 | 2019-02-01 | 18 |  |
| 20 | 5 | **소프트웨어개발** |  | 55d | 2018-12-19 | 2019-03-05 |  | 50% |
| 21 | 5.1 | 아키텍쳐 설계 |  | 5d | 2018-12-19 | 2018-12-25 | 5 | 100% |
| 22 | 5.2 | 구현 |  | 20d | 2018-12-26 | 2019-01-22 | 21 | 50% |
| 23 | 5.3 | (산출물) 소스코드 | milestone | 0d | 2019-01-23 | 2019-01-23 | 22 |  |
| 24 | 5.4 | 디버깅 |  | 30d | 2019-01-23 | 2019-03-05 | 23 |  |

| ID | WBS | Task | Type | Duration | Start | Finish | Predecessors |
| --- | --- | --- | --- | --- | --- | --- | --- |
| 25 | 6 | **조립 및 테스트** |  | 70d | 2019-02-04 | 2019-05-10 |  |
| 26 | 6.1 | 1차 조립 및 테스트 |  | 7d | 2019-02-04 | 2019-02-12 | 19 |
| 27 | 6.2 | (산출물) 시제품 | milestone | 0d | 2019-02-13 | 2019-02-13 | 26 |
| 28 | 6.3 | 1차 수정보완 |  | 14d | 2019-02-13 | 2019-03-04 | 27 |
| 29 | 6.4 | 2차 조립 및 테스트 |  | 15d | 2019-03-05 | 2019-03-25 | 28 |
| 30 | 6.5 | 2차 수정보완 |  | 14d | 2019-03-26 | 2019-04-12 | 29 |
| 31 | 6.6 | (산출물) 결과보고서 | milestone | 0d | 2019-04-15 | 2019-04-15 | 30 |
| 32 | 6.7 | 현장 운용 테스트 |  | 20d | 2019-04-15 | 2019-05-10 | 31 |
